# TaskList

Schedule from MS Project, 2010-10-04 to 2010-12-31.
ABC

## Calendars

- Standard: Mon-Fri 08:00-12:00, 13:00-17:00; Sat-Sun off. Exceptions (off unless hours are given): 2010-10-02 to 2011-04-30 08:00-12:00, 13:00-17:00 (recurring).

## Schedule

| ID | WBS | Task | Duration | Start | Finish | Predecessors | Total slack | Free slack | Constraint | Deadline |
| --- | --- | --- | --- | --- | --- | --- | --- | --- | --- | --- |
| 1 | 1 | **A. MODULE A** | 89d? | 2010-10-04 | 2010-12-31 |  | -61d | 0d |  | 2010-10-31 |
| 2 | 1.1 | **1. BUSINESS ANALYSIS** | 20d? | 2010-10-04 | 2010-10-23 |  | -50d | 0d |  |  |
| 3 | 1.1.1 | 1.1 Understand Habubank's Documents | 12d? | 2010-10-04 | 2010-10-15 |  | -42d | 0d | finish no earlier than 2010-10-15 |  |
| 4 | 1.1.2 | 1.2 Understand EPI's Document | 8d? | 2010-10-16 | 2010-10-23 |  | -50d | 0d | finish no earlier than 2010-10-23 |  |
| 5 | 1.2 | **2. SYSTEM ANALYSIS** | 32d? | 2010-10-25 | 2010-11-25 | 2 | -51d | 0d |  |  |
| 6 | 1.2.1 | 2.1 ELICITATION | 22d? | 2010-10-25 | 2010-11-15 |  | -41d | 0d | finish no earlier than 2010-11-15 |  |
| 7 | 1.2.2 | 2.2 ANALYSIS AND NEGOTIATION | 22d? | 2010-10-25 | 2010-11-15 |  | -51d | 0d | finish no earlier than 2010-11-15 |  |
| 8 | 1.2.3 | 2.3 VALIDATION | 5d? | 2010-11-16 | 2010-11-20 | 7 | -51d | 0d | finish no earlier than 2010-11-20 |  |
| 9 | 1.2.4 | 2.4 DESCRIBE REQUIREMENTS | 5d? | 2010-11-21 | 2010-11-25 | 8 | -51d | 0d | finish no earlier than 2010-11-25 |  |
| 10 | 1.3 | **3. SYSTEM DESIGN** | 20d? | 2010-11-26 | 2010-12-15 | 5 | -61d | 0d |  |  |
| 11 | 1.3.1 | 3.1 ARCHITECTURE DESIGN | 5d? | 2010-11-26 | 2010-11-30 |  | -51d | 0d | finish no earlier than 2010-11-30 |  |
| 12 | 1.3.2 | 3.2 ERD DESIGN | 5d? | 2010-12-01 | 2010-12-05 | 11 | -51d | 0d | finish no earlier than 2010-12-05 |  |
| 13 | 1.3.3 | 3.3 DETAILED DESIGN | 10d? | 2010-12-06 | 2010-12-15 |  | -61d | 0d | finish no earlier than 2010-12-15 |  |
| 14 | 1.4 | 4. IMPLEMENTATION | 10d? | 2010-12-16 | 2010-12-25 | 10 | -61d | 0d | start no earlier than 2010-12-16 |  |
| 15 | 1.5 | 5. TESTING | 6d? | 2010-12-26 | 2010-12-31 | 14 | -61d | 0d | finish no earlier than 2010-12-31 |  |
| 16 | 2 | B. MODULE B | 1d? | 2010-12-01 | 2010-12-01 |  | 30d |  | start no earlier than 2010-12-01 |  |
